# Lab6-EDT-Secuencia-Actividades-Proyecto-Tacogos

How a schedule from MS Project changed from version to version. A marks actual dates.

## Version 1 (saved 2024-05-13, file lab6.mpp)

Note of the change: Add: API

| ID | WBS | Task | Duration | Start | Finish | Predecessors | Total float | Constraint |
| --- | --- | --- | --- | --- | --- | --- | --- | --- |
| 1 | 1 | **Proyecto Taco Gos** | 723d? | 2024-04-08 | 2027-01-13 |  |  |  |
| 2 | 1.1 | **Plan de Negocio de Taco Gos** | 6d | 2024-04-08 | 2024-04-15 |  |  |  |
| 3 |  | Reunion con cliente | 3h | 2024-04-08 | 2024-04-08 |  |  | start no earlier than 2024-04-08 |
| 4 |  | Realización del plan de negocio | 3d | 2024-04-08 | 2024-04-11 |  |  | finish no earlier than 2024-04-15 |
| 5 | 1.2 | **Acuerdos de Colaboracion** | 39d | 2024-04-15 | 2024-06-06 |  |  |  |
| 6 |  | Acuerdo con OpenAI | 3d | 2024-04-16 | 2024-04-18 |  |  |  |
| 7 |  | Acuerdo con Amazon | 8d | 2024-04-19 | 2024-04-30 |  |  |  |
| 8 |  | Acuerdo con Mercadona | 2d | 2024-04-30 | 2024-05-01 |  |  |  |
| 9 |  | Acuerdo con UCLM | 1d | 2024-05-02 | 2024-05-02 |  |  |  |
| 10 |  | Firmas de acuerdos | 1d | 2024-05-03 | 2024-05-03 | 9, 6, 7, 8 |  |  |
| 11 | 1.3 | **Implementación de Tecnología Avanzada** | 299d | 2024-06-07 | 2025-07-30 |  |  |  |
| 12 |  | Realizacion del informe | 1d | 2024-06-06 | 2024-06-06 |  |  | start no earlier than 2024-06-06 |
| 13 | 1.4 | **Programas de Prácticas y Desarrollo Educativo** | 5d | 2025-09-01 | 2025-09-05 |  |  |  |
| 14 |  | Realizar Documentacion | 2d | 2025-09-01 | 2025-09-02 |  | 355.88d |  |
| 15 | 1.5 | **Informe de Sostenibilidad y Responsabilidad Social Corporativa** | 2d | 2025-08-06 | 2025-08-07 |  |  |  |
| 16 |  | Evaluación de impacto ambiental y social | 1d | 2025-08-06 | 2025-08-06 |  |  |  |
| 17 |  | Finalizacion de informe de Sostenibilidad | 1d | 2025-08-07 | 2025-08-07 |  |  |  |
| 18 | 1.6 | **Sistema de Gestión de Relaciones con el Cliente (CRM)** | 9d | 2025-08-08 | 2025-08-20 |  |  |  |
| 19 |  | Diseño de requisitos del CRM | 3d | 2025-08-08 | 2025-08-12 |  | 370.88d |  |
| 20 |  | Diseño de los modulos del CRM | 3d | 2025-08-08 | 2025-08-12 |  | 370.88d |  |
| 21 |  | Desarrollo del CRM | 5d | 2025-08-08 | 2025-08-14 |  | 368.88d |  |
| 22 |  | Despliegue del CRM | 5d | 2025-08-08 | 2025-08-14 |  | 368.88d |  |
| 23 |  | Implementacion del CRM | 7d | 2025-08-08 | 2025-08-18 |  | 366.88d |  |
| 24 | 1.7 | **Creación de una plataforma de comercio electrónico** | 18d | 2025-08-21 | 2025-09-15 |  |  |  |
| 25 |  | Diseño de requisitos de la plataforma | 1d | 2025-08-21 | 2025-08-21 |  | 361.88d |  |
| 26 |  | Diseño de los modulos de la plataforma | 2d | 2025-08-22 | 2025-08-25 | 25 | 361.88d |  |
| 27 |  | Desarrollo de la plataforma | 2d | 2025-08-26 | 2025-08-27 |  | 359.88d | start no earlier than 2025-08-26 |
| 28 |  | Despliegue de la plataforma | 3d | 2025-08-28 | 2025-09-01 |  | 356.88d | start no earlier than 2025-08-28 |
| 29 |  | Implementacion de la plataforma | 6d | 2025-08-29 | 2025-09-05 |  | 352.88d | start no earlier than 2025-08-29 |
| 30 | 1.8 | **Sistema de gestión de proveedores** | 42d | 2025-10-16 | 2025-12-12 |  |  |  |
| 31 |  | Diseño de requisitos del sistema | 3d | 2025-10-16 | 2025-10-20 |  | 321.88d |  |
| 32 |  | Diseño de los modulos del sistema | 4d | 2025-10-21 | 2025-10-24 |  | 317.88d | start no earlier than 2025-10-21 |
| 33 |  | Desarrollo del sistema | 7d | 2025-10-27 | 2025-11-04 |  | 310.88d | start no earlier than 2025-10-27 |
| 34 |  | Despliegue del sistema | 7d | 2025-11-05 | 2025-11-13 |  | 303.88d | start no earlier than 2025-11-05 |
| 35 |  | Implementacion del sistema | 21d | 2025-11-14 | 2025-12-12 |  | 282.88d | start no earlier than 2025-11-14 |
| 36 | 1.9 | **Análisis de datos por IA** | 7d | 2026-01-01 | 2026-01-09 |  |  |  |
| 37 |  | Desarrollo de la IA | 7d | 2026-01-01 | 2026-01-09 |  | 262.88d |  |
| 38 | 1.10 | **Informe de Resultados y Evaluación del Proyecto** | 8d | 2027-01-01 | 2027-01-12 |  |  |  |
| 39 |  | Realizacion de informe final | 8d | 2027-01-01 | 2027-01-12 |  | 0.88d |  |

## Version 2 (data date 2024-05-13, saved 2024-05-13, file lab6 (1).mpp)

Note of the change: Add: API

Last finish 2027-01-13 → 2026-06-04 (-223d). Complete tasks 0 → 3.

Changed:

| ID | Task | Start | Finish | Duration | Complete | Total float | Predecessors | Other |
| --- | --- | --- | --- | --- | --- | --- | --- | --- |
| 1 | **Proyecto Taco Gos** | 2024-04-08 A | 2027-01-13 → 2026-06-04 (-223d) | 723d? → 546.62d | 0% → 11% | none → 0d |  | resources none → Equipo de Gestión de Proyectos; Analistas de datos; Equipo de desarrollo; Equipo de despliegue; Equipo de Negocios y Relaciones Corporativas; Equipo de Recursos Humanos; baseline start none → 2024-04-08; baseline finish none → 2026-06-04 |
| 2 | **Plan de Negocio de Taco Gos** | 2024-04-08 A | 2024-04-15 → 2024-04-23 (+8d) | 6d → 11.5d | 0% → 99% | none → 0d |  | resources none → Equipo de Negocios y Relaciones Corporativas; baseline start none → 2024-04-08; baseline finish none → 2024-04-23 |
| 3 | Reunion con cliente | 2024-04-08 A | 2024-04-08 A |  | 0% → 100% |  |  | resources none → Equipo de Negocios y Relaciones Corporativas; baseline start none → 2024-04-08; baseline finish none → 2024-04-08 |
| 4 | Realización del plan de negocio | 2024-04-08 → 2024-04-10 A (+2d) | 2024-04-11 → 2024-04-23 A (+12d) | 3d → 9d | 0% → 100% |  | none → 3 | resources none → Equipo de Negocios y Relaciones Corporativas; baseline start none → 2024-04-10; baseline finish none → 2024-04-23 |
| 5 | **Acuerdos de Colaboracion** | 2024-04-15 A | 2024-06-06 → 2024-06-28 (+22d) | 39d → 51.62d | 0% → 48% | none → 202.38d | none → 2 | resources none → Equipo de Negocios y Relaciones Corporativas; baseline start none → 2024-04-15; baseline finish none → 2024-06-28 |
| 6 | Acuerdo con OpenAI | 2024-04-16 → 2024-04-15 A (-1d) | 2024-04-18 → 2024-05-02 A (+14d) | 3d → 13d | 0% → 100% |  |  | resources none → Equipo de Negocios y Relaciones Corporativas; baseline start none → 2024-04-15; baseline finish none → 2024-05-02 |
| 7 | Acuerdo con Amazon | 2024-04-19 → 2024-04-18 A (-1d) | 2024-04-30 → 2024-06-11 (+42d) | 8d → 35d | 0% → 41% | none → 0d | none → 6 | resources none → Equipo de Negocios y Relaciones Corporativas; baseline start none → 2024-04-18; baseline finish none → 2024-06-11 |
| 8 | Acuerdo con Mercadona | 2024-04-30 A | 2024-05-01 → 2024-06-20 (+50d) | 2d → 9d | 0% → 22% | none → 0d | none → 7 | resources none → Equipo de Negocios y Relaciones Corporativas; baseline start none → 2024-04-30; baseline finish none → 2024-06-20 |
| 9 | Acuerdo con UCLM | 2024-05-02 A | 2024-05-02 → 2024-06-25 (+54d) | 1d → 4d | 0% → 25% | none → 0d | none → 8 | resources none → Equipo de Negocios y Relaciones Corporativas; baseline start none → 2024-05-02; baseline finish none → 2024-06-25 |
| 10 | Firmas de acuerdos | 2024-05-03 A | 2024-05-03 → 2024-06-28 (+56d) | 1d → 4d | 0% → 25% | none → 202.38d |  | resources none → Equipo de Negocios y Relaciones Corporativas; baseline start none → 2024-05-03; baseline finish none → 2024-06-28 |
| 11 | **Implementación de Tecnología Avanzada** | 2024-06-07 → 2024-06-28 (+21d) | 2025-07-30 → 2024-07-03 (-392d) | 299d → 3d |  | none → 202.38d | none → 5 | resources none → Equipo de desarrollo [70%]; Equipo de Gestión de Proyectos; baseline start none → 2024-06-28; baseline finish none → 2024-07-03 |
| 12 | Realizacion del informe | 2024-06-06 → 2024-06-28 (+22d) | 2024-06-06 → 2024-07-03 (+27d) | 1d → 3d |  | none → 202.38d |  | resources none → Equipo de Gestión de Proyectos; baseline start none → 2024-06-28; baseline finish none → 2024-07-03 |
| 13 | **Programas de Prácticas y Desarrollo Educativo** | 2025-09-01 → 2024-07-03 (-425d) | 2025-09-05 → 2024-07-11 (-421d) | 5d → 6d |  | none → 202.38d | none → 11 | resources none → Equipo de Recursos Humanos; baseline start none → 2024-07-03; baseline finish none → 2024-07-11 |
| 14 | Realizar Documentacion | 2025-09-01 → 2024-07-03 (-425d) | 2025-09-02 → 2024-07-11 (-418d) | 2d → 6d |  | 355.88d → 202.38d |  | resources none → Equipo de Recursos Humanos; baseline start none → 2024-07-03; baseline finish none → 2024-07-11 |
| 15 | **Informe de Sostenibilidad y Responsabilidad Social Corporativa** | 2025-08-06 → 2024-07-11 (-391d) | 2025-08-07 → 2024-07-22 (-381d) | 2d → 6d |  | none → 202.38d | none → 13 | resources none → Equipo de Recursos Humanos; baseline start none → 2024-07-11; baseline finish none → 2024-07-22 |
| 16 | Evaluación de impacto ambiental y social | 2025-08-06 → 2024-07-11 (-391d) | 2025-08-06 → 2024-07-16 (-386d) | 1d → 3d |  | none → 202.38d |  | resources none → Equipo de Recursos Humanos; baseline start none → 2024-07-11; baseline finish none → 2024-07-16 |
| 17 | Finalizacion de informe de Sostenibilidad | 2025-08-07 → 2024-07-17 (-386d) | 2025-08-07 → 2024-07-22 (-381d) | 1d → 3d |  | none → 202.38d | none → 16 | resources none → Equipo de Recursos Humanos; baseline start none → 2024-07-17; baseline finish none → 2024-07-22 |
| 18 | **Sistema de Gestión de Relaciones con el Cliente (CRM)** | 2025-08-08 → 2024-07-22 (-382d) | 2025-08-20 → 2024-10-24 (-300d) | 9d → 66.5d |  | none → 202.25d | none → 15 | resources none → Equipo de desarrollo [70%]; baseline start none → 2024-07-22; baseline finish none → 2024-10-24 |
| 19 | Diseño de requisitos del CRM | 2025-08-08 → 2024-07-22 (-382d) | 2025-08-12 → 2024-08-02 (-375d) | 3d → 9d |  | 370.88d → 202.25d |  | resources none → Equipo de desarrollo [70%]; baseline start none → 2024-07-22; baseline finish none → 2024-08-02 |
| 20 | Diseño de los modulos del CRM | 2025-08-08 → 2024-08-02 (-371d) | 2025-08-12 → 2024-08-15 (-362d) | 3d → 9d |  | 370.88d → 202.25d | none → 19 | resources none → Equipo de desarrollo [70%]; baseline start none → 2024-08-02; baseline finish none → 2024-08-15 |
| 21 | Desarrollo del CRM | 2025-08-08 → 2024-08-15 (-358d) | 2025-08-14 → 2024-09-05 (-343d) | 5d → 15d |  | 368.88d → 202.25d | none → 20 | resources none → Equipo de desarrollo [70%]; baseline start none → 2024-08-15; baseline finish none → 2024-09-05 |
| 22 | Despliegue del CRM | 2025-08-08 → 2024-09-05 (-337d) | 2025-08-14 → 2024-09-25 (-323d) | 5d → 15d |  | 368.88d → 202.25d | none → 21 | resources none → Equipo de despliegue; baseline start none → 2024-09-05; baseline finish none → 2024-09-25 |
| 23 | Implementacion del CRM | 2025-08-08 → 2024-09-25 (-317d) | 2025-08-18 → 2024-10-24 (-298d) | 7d → 21d |  | 366.88d → 202.25d | none → 22 | resources none → Equipo de despliegue; baseline start none → 2024-09-25; baseline finish none → 2024-10-24 |
| 24 | **Creación de una plataforma de comercio electrónico** | 2025-08-21 → 2024-10-24 (-301d) | 2025-09-15 → 2025-10-09 (+24d) | 18d → 242.62d |  | none → 0d | none → 18 | resources none → Equipo de desarrollo [70%]; baseline start none → 2024-10-24; baseline finish none → 2025-10-09 |
| 25 | Diseño de requisitos de la plataforma | 2025-08-21 → 2024-10-24 (-301d) | 2025-08-21 → 2024-10-29 (-296d) | 1d → 3d |  | 361.88d → 202.5d |  | resources none → Equipo de desarrollo [70%]; baseline start none → 2024-10-24; baseline finish none → 2024-10-29 |
| 26 | Diseño de los modulos de la plataforma | 2025-08-22 → 2024-10-29 (-297d) | 2025-08-25 → 2024-11-06 (-292d) | 2d → 6d |  | 361.88d → 202.25d |  | resources none → Equipo de desarrollo [70%]; baseline start none → 2024-10-29; baseline finish none → 2024-11-06 |
| 27 | Desarrollo de la plataforma |  | 2025-08-27 → 2025-09-02 (+6d) | 2d → 6d |  | 359.88d → 0d | none → 26 | resources none → Equipo de despliegue; baseline start none → 2025-08-26; baseline finish none → 2025-09-02 |
| 28 | Despliegue de la plataforma | 2025-08-28 → 2025-09-02 (+5d) | 2025-09-01 → 2025-09-15 (+14d) | 3d → 9d |  | 356.88d → 0d | none → 27 | resources none → Equipo de despliegue; baseline start none → 2025-09-02; baseline finish none → 2025-09-15 |
| 29 | Implementacion de la plataforma | 2025-08-29 → 2025-09-15 (+17d) | 2025-09-05 → 2025-10-09 (+34d) | 6d → 18d |  | 352.88d → 0d | none → 28 | resources none → Equipo de despliegue; baseline start none → 2025-09-15; baseline finish none → 2025-10-09 |
| 30 | **Sistema de gestión de proveedores** | 2025-10-16 → 2025-10-09 (-7d) | 2025-12-12 → 2026-04-01 (+110d) | 42d → 120.88d |  | none → 0d | none → 24 | resources none → Equipo de desarrollo; baseline start none → 2025-10-09; baseline finish none → 2026-04-01 |
| 31 | Diseño de requisitos del sistema | 2025-10-16 → 2025-10-09 (-7d) | 2025-10-20 → 2025-10-22 (+2d) | 3d → 9d |  | 321.88d → 0d |  | resources none → Equipo de desarrollo; baseline start none → 2025-10-09; baseline finish none → 2025-10-22 |
| 32 | Diseño de los modulos del sistema | 2025-10-21 → 2025-10-22 (+1d) | 2025-10-24 → 2025-11-07 (+14d) | 4d → 12d |  | 317.88d → 0d | none → 31 | resources none → Equipo de desarrollo; baseline start none → 2025-10-22; baseline finish none → 2025-11-07 |
| 33 | Desarrollo del sistema | 2025-10-27 → 2025-11-07 (+11d) | 2025-11-04 → 2025-12-08 (+34d) | 7d → 21d |  | 310.88d → 0d | none → 32 | resources none → Equipo de desarrollo; baseline start none → 2025-11-07; baseline finish none → 2025-12-08 |
| 34 | Despliegue del sistema | 2025-11-05 → 2025-12-08 (+33d) | 2025-11-13 → 2026-01-05 (+53d) | 7d → 21d |  | 303.88d → 0d | none → 33 | resources none → Equipo de despliegue; baseline start none → 2025-12-08; baseline finish none → 2026-01-05 |
| 35 | Implementacion del sistema | 2025-11-14 → 2026-01-05 (+52d) | 2025-12-12 → 2026-04-01 (+110d) | 21d → 63d |  | 282.88d → 0d | none → 34 | resources none → Equipo de despliegue; baseline start none → 2026-01-05; baseline finish none → 2026-04-01 |
| 36 | **Análisis de datos por IA** | 2026-01-01 → 2026-04-01 (+90d) | 2026-01-09 → 2026-04-30 (+111d) | 7d → 20.38d |  | none → 0d | none → 30 | resources none → Analistas de datos; baseline start none → 2026-04-01; baseline finish none → 2026-04-30 |
| 37 | Desarrollo de la IA | 2026-01-01 → 2026-04-01 (+90d) | 2026-01-09 → 2026-04-30 (+111d) | 7d → 21d |  | 262.88d → 0d |  | resources none → Analistas de datos; baseline start none → 2026-04-01; baseline finish none → 2026-04-30 |
| 38 | **Informe de Resultados y Evaluación del Proyecto** | 2027-01-01 → 2026-04-30 (-246d) | 2027-01-12 → 2026-06-04 (-222d) | 8d → 24d |  | none → 0d | none → 36 | resources none → Equipo de Gestión de Proyectos; baseline start none → 2026-04-30; baseline finish none → 2026-06-04 |
| 39 | Realizacion de informe final | 2027-01-01 → 2026-04-30 (-246d) | 2027-01-12 → 2026-06-04 (-222d) | 8d → 24d |  | 0.88d → 0d |  | resources none → Equipo de Gestión de Proyectos; baseline start none → 2026-04-30; baseline finish none → 2026-06-04 |

## Version 3 (data date 2024-05-13, saved 2024-05-13, file lab6 (2).mpp)

Note of the change: Add: API

Last finish 2026-06-04 → 2026-02-03 (-121d). Complete tasks 3 → 0.

Changed:

| ID | Task | Start | Finish | Duration | Complete | Total float | Other |
| --- | --- | --- | --- | --- | --- | --- | --- |
| 1 | **Proyecto Taco Gos** | 2024-04-08 A → 2024-06-03 (+56d) | 2026-06-04 → 2026-02-03 (-121d) | 546.62d → 425.12d | 11% → 0% |  | resources Equipo de Gestión de Proyectos; Analistas de datos; Equipo de desarrollo; Equipo de despliegue; Equipo de Negocios y Relaciones Corporativas; Equipo de Recursos Humanos → none; baseline start 2024-04-08 → 2024-06-03; baseline finish 2026-06-04 → 2026-02-03 |
| 2 | **Plan de Negocio de Taco Gos** | 2024-04-08 A → 2024-06-03 (+56d) | 2024-04-23 → 2024-07-11 (+79d) | 11.5d → 28d | 99% → 0% | 0d → 11.88d | baseline start 2024-04-08 → 2024-06-03; baseline finish 2024-04-23 → 2024-07-11 |
| 3 | Reunion con cliente | 2024-04-08 A → 2024-06-03 (+56d) | 2024-04-08 A → 2024-06-03 (+56d) |  | 100% → 0% | none → 11.88d | constraint start no earlier than 2024-04-08 → none; baseline start 2024-04-08 → 2024-06-03; baseline finish 2024-04-08 → 2024-06-03 |
| 4 | Realización del plan de negocio | 2024-04-10 A → 2024-07-01 (+82d) | 2024-04-23 A → 2024-07-11 (+79d) |  | 100% → 0% | none → 11.88d | constraint finish no earlier than 2024-04-15 → none; baseline start 2024-04-10 → 2024-07-01; baseline finish 2024-04-23 → 2024-07-11 |
| 5 | **Acuerdos de Colaboracion** | 2024-04-15 A → 2024-07-30 (+106d) | 2024-06-28 → 2024-12-11 (+166d) | 51.62d → 94.62d | 48% → 0% | 202.38d → 0d | baseline start 2024-04-15 → 2024-07-29; baseline finish 2024-06-28 → 2024-12-11 |
| 6 | Acuerdo con OpenAI | 2024-04-15 A → 2024-07-30 (+106d) | 2024-05-02 A → 2024-08-15 (+105d) |  | 100% → 0% | none → 0.12d | baseline start 2024-04-15 → 2024-07-29; baseline finish 2024-05-02 → 2024-08-15 |
| 7 | Acuerdo con Amazon | 2024-04-18 A → 2024-09-02 (+137d) | 2024-06-11 → 2024-10-22 (+133d) |  | 41% → 0% | 0d → 0.12d | baseline start 2024-04-18 → 2024-09-02; baseline finish 2024-06-11 → 2024-10-22 |
| 8 | Acuerdo con Mercadona | 2024-04-30 A → 2024-11-01 (+185d) | 2024-06-20 → 2024-11-14 (+147d) |  | 22% → 0% | 0d → 0.12d | baseline start 2024-04-30 → 2024-11-01; baseline finish 2024-06-20 → 2024-11-14 |
| 9 | Acuerdo con UCLM | 2024-05-02 A → 2024-12-02 (+214d) | 2024-06-25 → 2024-12-05 (+163d) |  | 25% → 0% | 0d → 0.12d | baseline start 2024-05-02 → 2024-12-02; baseline finish 2024-06-25 → 2024-12-05 |
| 10 | Firmas de acuerdos | 2024-05-03 A → 2024-12-05 (+216d) | 2024-06-28 → 2024-12-11 (+166d) |  | 25% → 0% | 202.38d → 0d | baseline start 2024-05-03 → 2024-12-05; baseline finish 2024-06-28 → 2024-12-11 |
| 11 | **Implementación de Tecnología Avanzada** | 2024-06-28 → 2024-12-12 (+167d) | 2024-07-03 → 2024-12-17 (+167d) |  |  | 202.38d → 0d | baseline start 2024-06-28 → 2024-12-12; baseline finish 2024-07-03 → 2024-12-17 |
| 12 | Realizacion del informe | 2024-06-28 → 2024-12-12 (+167d) | 2024-07-03 → 2024-12-17 (+167d) |  |  | 202.38d → 0d | constraint start no earlier than 2024-06-06 → none; baseline start 2024-06-28 → 2024-12-12; baseline finish 2024-07-03 → 2024-12-17 |
| 13 | **Programas de Prácticas y Desarrollo Educativo** | 2024-07-03 → 2024-12-17 (+167d) | 2024-07-11 → 2024-12-26 (+168d) | 6d → 7d |  | 202.38d → 0d | baseline start 2024-07-03 → 2024-12-17; baseline finish 2024-07-11 → 2024-12-26 |
| 14 | Realizar Documentacion | 2024-07-03 → 2024-12-17 (+167d) | 2024-07-11 → 2024-12-26 (+168d) |  |  | 202.38d → 0d | baseline start 2024-07-03 → 2024-12-17; baseline finish 2024-07-11 → 2024-12-26 |
| 15 | **Informe de Sostenibilidad y Responsabilidad Social Corporativa** | 2024-07-11 → 2024-12-26 (+168d) | 2024-07-22 → 2025-01-07 (+169d) | 6d → 8d |  | 202.38d → 0d | baseline start 2024-07-11 → 2024-12-26; baseline finish 2024-07-22 → 2025-01-07 |
| 16 | Evaluación de impacto ambiental y social | 2024-07-11 → 2024-12-26 (+168d) | 2024-07-16 → 2025-01-01 (+169d) |  |  | 202.38d → 0d | baseline start 2024-07-11 → 2024-12-26; baseline finish 2024-07-16 → 2025-01-01 |
| 17 | Finalizacion de informe de Sostenibilidad | 2024-07-17 → 2025-01-01 (+168d) | 2024-07-22 → 2025-01-07 (+169d) |  |  | 202.38d → 0d | baseline start 2024-07-17 → 2025-01-01; baseline finish 2024-07-22 → 2025-01-07 |
| 18 | **Sistema de Gestión de Relaciones con el Cliente (CRM)** | 2024-07-22 → 2025-01-07 (+169d) | 2024-10-24 → 2025-04-11 (+169d) |  |  | 202.25d → 0d | baseline start 2024-07-22 → 2025-01-07; baseline finish 2024-10-24 → 2025-04-11 |
| 19 | Diseño de requisitos del CRM | 2024-07-22 → 2025-01-07 (+169d) | 2024-08-02 → 2025-01-20 (+171d) |  |  | 202.25d → 0d | baseline start 2024-07-22 → 2025-01-07; baseline finish 2024-08-02 → 2025-01-20 |
| 20 | Diseño de los modulos del CRM | 2024-08-02 → 2025-01-20 (+171d) | 2024-08-15 → 2025-01-31 (+169d) |  |  | 202.25d → 0d | baseline start 2024-08-02 → 2025-01-20; baseline finish 2024-08-15 → 2025-01-31 |
| 21 | Desarrollo del CRM | 2024-08-15 → 2025-01-31 (+169d) | 2024-09-05 → 2025-02-21 (+169d) |  |  | 202.25d → 0d | baseline start 2024-08-15 → 2025-01-31; baseline finish 2024-09-05 → 2025-02-21 |
| 22 | Despliegue del CRM | 2024-09-05 → 2025-02-21 (+169d) | 2024-09-25 → 2025-03-14 (+170d) |  |  | 202.25d → 0d | baseline start 2024-09-05 → 2025-02-21; baseline finish 2024-09-25 → 2025-03-14 |
| 23 | Implementacion del CRM | 2024-09-25 → 2025-03-14 (+170d) | 2024-10-24 → 2025-04-11 (+169d) |  |  | 202.25d → 0d | baseline start 2024-09-25 → 2025-03-14; baseline finish 2024-10-24 → 2025-04-11 |
| 24 | **Creación de una plataforma de comercio electrónico** | 2024-10-24 → 2025-04-11 (+169d) | 2025-10-09 → 2025-06-11 (-120d) | 242.62d → 40.5d |  |  | baseline start 2024-10-24 → 2025-04-11; baseline finish 2025-10-09 → 2025-06-10 |
| 25 | Diseño de requisitos de la plataforma | 2024-10-24 → 2025-04-11 (+169d) | 2024-10-29 → 2025-04-16 (+169d) |  |  | 202.5d → 0d | baseline start 2024-10-24 → 2025-04-11; baseline finish 2024-10-29 → 2025-04-16 |
| 26 | Diseño de los modulos de la plataforma | 2024-10-29 → 2025-04-16 (+169d) | 2024-11-06 → 2025-04-24 (+169d) |  |  | 202.25d → 0d | baseline start 2024-10-29 → 2025-04-16; baseline finish 2024-11-06 → 2025-04-24 |
| 27 | Desarrollo de la plataforma | 2025-08-26 → 2025-04-24 (-124d) | 2025-09-02 → 2025-05-02 (-123d) |  |  |  | constraint start no earlier than 2025-08-26 → none; baseline start 2025-08-26 → 2025-04-24; baseline finish 2025-09-02 → 2025-05-02 |
| 28 | Despliegue de la plataforma | 2025-09-02 → 2025-05-02 (-123d) | 2025-09-15 → 2025-05-15 (-123d) |  |  |  | constraint start no earlier than 2025-08-28 → none; baseline start 2025-09-02 → 2025-05-02; baseline finish 2025-09-15 → 2025-05-14 |
| 29 | Implementacion de la plataforma | 2025-09-15 → 2025-05-15 (-123d) | 2025-10-09 → 2025-06-11 (-120d) |  |  |  | constraint start no earlier than 2025-08-29 → none; baseline start 2025-09-15 → 2025-05-15; baseline finish 2025-10-09 → 2025-06-10 |
| 30 | **Sistema de gestión de proveedores** | 2025-10-09 → 2025-06-11 (-120d) | 2026-04-01 → 2025-12-02 (-120d) | 120.88d → 121d |  |  | baseline start 2025-10-09 → 2025-06-10; baseline finish 2026-04-01 → 2025-12-01 |
| 31 | Diseño de requisitos del sistema | 2025-10-09 → 2025-06-11 (-120d) | 2025-10-22 → 2025-06-24 (-120d) |  |  |  | baseline start 2025-10-09 → 2025-06-10; baseline finish 2025-10-22 → 2025-06-23 |
| 32 | Diseño de los modulos del sistema | 2025-10-22 → 2025-06-24 (-120d) | 2025-11-07 → 2025-07-10 (-120d) |  |  |  | constraint start no earlier than 2025-10-21 → none; baseline start 2025-10-22 → 2025-06-23; baseline finish 2025-11-07 → 2025-07-09 |
| 33 | Desarrollo del sistema | 2025-11-07 → 2025-07-10 (-120d) | 2025-12-08 → 2025-08-08 (-122d) |  |  |  | constraint start no earlier than 2025-10-27 → none; baseline start 2025-11-07 → 2025-07-09; baseline finish 2025-12-08 → 2025-08-07 |
| 34 | Despliegue del sistema | 2025-12-08 → 2025-08-08 (-122d) | 2026-01-05 → 2025-09-05 (-122d) |  |  |  | constraint start no earlier than 2025-11-05 → none; baseline start 2025-12-08 → 2025-08-07; baseline finish 2026-01-05 → 2025-09-04 |
| 35 | Implementacion del sistema | 2026-01-05 → 2025-09-05 (-122d) | 2026-04-01 → 2025-12-02 (-120d) |  |  |  | constraint start no earlier than 2025-11-14 → none; baseline start 2026-01-05 → 2025-09-04; baseline finish 2026-04-01 → 2025-12-01 |
| 36 | **Análisis de datos por IA** | 2026-04-01 → 2025-12-02 (-120d) | 2026-04-30 → 2025-12-31 (-120d) | 20.38d → 20.5d |  |  | baseline start 2026-04-01 → 2025-12-01; baseline finish 2026-04-30 → 2025-12-30 |
| 37 | Desarrollo de la IA | 2026-04-01 → 2025-12-02 (-120d) | 2026-04-30 → 2025-12-31 (-120d) |  |  |  | baseline start 2026-04-01 → 2025-12-01; baseline finish 2026-04-30 → 2025-12-30 |
| 38 | **Informe de Resultados y Evaluación del Proyecto** | 2026-04-30 → 2025-12-31 (-120d) | 2026-06-04 → 2026-02-03 (-121d) |  |  |  | baseline start 2026-04-30 → 2025-12-30; baseline finish 2026-06-04 → 2026-02-03 |
| 39 | Realizacion de informe final | 2026-04-30 → 2025-12-31 (-120d) | 2026-06-04 → 2026-02-03 (-121d) |  |  |  | baseline start 2026-04-30 → 2025-12-30; baseline finish 2026-06-04 → 2026-02-03 |
